# Project Plan

How a schedule from GanttProject changed from version to version. A marks actual dates.

## Version 1 (saved 2016-02-23)

Note of the change: Added first draft of ganttt chart for ws2

| ID | WBS | Task | Duration | Start | Finish | Predecessors | Complete |
| --- | --- | --- | --- | --- | --- | --- | --- |
| 1 | 1 | **Worksheet 1** | 11d | 2016-01-29 | 2016-02-08 |  | 94% |
| 2 |  | Initial meeting | 1d | 2016-01-29 | 2016-01-29 |  | 100% |
| 3 |  | Project Plan | 2d | 2016-02-05 | 2016-02-06 | 4FS+5d | 100% |
| 4 |  | Role assignment | 1d | 2016-01-30 | 2016-01-30 |  | 100% |
| 5 |  | Role definition | 1d | 2016-02-07 | 2016-02-07 | 4FS+7d | 100% |
| 6 |  | FDM Interview | 1d | 2016-02-02 | 2016-02-02 |  | 100% |
| 7 |  | Minutes of first meeting | 1d | 2016-02-06 | 2016-02-06 | 4FS+6d | 100% |
| 8 |  | Use case diagram | 2d | 2016-02-05 | 2016-02-06 | 4FS+5d | 100% |
| 9 |  | Software architecture and technology rationale | 1d | 2016-02-07 | 2016-02-07 | 4FS+7d | 100% |
| 10 |  | Project backlog | 3d | 2016-02-03 | 2016-02-05 | 4FS+3d | 100% |
| 11 |  | Risk assessment | 2d | 2016-02-06 | 2016-02-07 | 4FS+6d | 100% |
| 12 |  | Project glossary | 2d | 2016-02-07 | 2016-02-08 | 3FF, 4FS+7d, 7FF, 8FF, 9FF, 10FF, 11FF | 100% |
| 13 |  | Presentation - Wiki Pages | 1d | 2016-02-08 | 2016-02-08 | 4, 12FF | 100% |
| 14 |  | Finalise and submit WS1 | 0d | 2016-02-09 | 2016-02-09 | 13 |  |
| 15 | 2 | **Worksheet 2** | 24d | 2016-02-09 | 2016-03-03 | 1 | 6% |
| 16 |  | Meeting to organise worksheet 2 | 1d | 2016-02-10 | 2016-02-10 |  | 100% |
| 17 |  | Minutes | 1d | 2016-02-11 | 2016-02-11 | 16 | 100% |
| 18 | 2.3 | **Sprint backlog** | 1d | 2016-02-09 | 2016-02-09 |  |  |
| 19 |  | Create Gherkin features | 1d | 2016-02-09 | 2016-02-09 |  |  |
| 20 |  | Create detailed analysis object model | 1d | 2016-02-09 | 2016-02-09 |  |  |
| 21 | 2.4 | **Detailed software architecture** | 1d | 2016-02-09 | 2016-02-09 |  |  |
| 22 |  | Make the component diagram | 1d | 2016-02-09 | 2016-02-09 |  |  |
| 23 | 2.5 | **Detailed object design** | 1d | 2016-02-09 | 2016-02-09 |  |  |
| 24 |  | Security layer design | 1d | 2016-02-09 | 2016-02-09 |  |  |
| 25 |  | Create data management strategy | 1d | 2016-02-09 | 2016-02-09 |  |  |
| 26 |  | Create object design model | 1d | 2016-02-09 | 2016-02-09 |  |  |
| 27 | 2.6 | **Detailed feature specification** | 1d | 2016-02-09 | 2016-02-09 |  |  |
| 28 |  | Feature specification for model layer | 1d | 2016-02-09 | 2016-02-09 |  |  |
| 29 |  | Feature specification for controller layer | 1d | 2016-02-09 | 2016-02-09 |  |  |
| 30 |  | Feature specification for security layer | 1d | 2016-02-09 | 2016-02-09 |  |  |
| 31 | 2.7 | **Project plan** | 5d | 2016-02-09 | 2016-02-13 |  |  |
| 32 |  | Update Risk Assessment | 1d | 2016-02-12 | 2016-02-12 |  |  |
| 33 |  | Create test plan | 1d | 2016-02-11 | 2016-02-11 |  |  |
| 34 |  | Update Gantt chart for worksheet 2 | 1d | 2016-02-09 | 2016-02-09 |  |  |
| 35 |  | Create configuration management plan | 1d | 2016-02-13 | 2016-02-13 |  |  |
| 36 |  | Prototype source code | 17d | 2016-02-15 | 2016-03-02 | 35FS+1d |  |
| 37 | 2.9 | **Step definitions** | 1d | 2016-03-02 | 2016-03-02 | 36FF |  |
| 38 |  | Step defs for security layer | 1d | 2016-03-02 | 2016-03-02 |  |  |
| 39 |  | Step defs for controller layer | 1d | 2016-03-02 | 2016-03-02 |  |  |
| 40 |  | Step defs for model layer | 1d | 2016-03-02 | 2016-03-02 |  |  |
| 41 |  | Prototype complete | 0d | 2016-03-03 | 2016-03-03 | 36 |  |
| 42 |  | Finalise and submit WS2 | 0d | 2016-03-04 | 2016-03-04 | 18, 21, 23, 27, 31, 41FS+1d |  |

## Version 2 (saved 2016-03-03)

Note of the change: Merge branch 'master' into testing

Last finish 2016-03-04 → 2016-03-03 (-1d). Complete tasks 14 → 29.

Added:

| ID | Task | Duration | Start | Finish | Predecessors | Resources |
| --- | --- | --- | --- | --- | --- | --- |
| 37 | Registration | 10d | 2016-02-15 | 2016-02-24 |  | Jordan [80%]; Carl [20%] |
| 38 | Messaging | 10d | 2016-02-20 | 2016-02-29 |  | Ahtif |
| 39 | Add Property Listings | 16d | 2016-02-15 | 2016-03-01 |  | Carl [80%] |
| 45 | Testing complete | 0d | 2016-03-03 | 2016-03-03 | 40 |  |

Changed:

| ID | Task | Start | Finish | Duration | Complete | Predecessors | Other |
| --- | --- | --- | --- | --- | --- | --- | --- |
| 15 | **Worksheet 2** |  | 2016-03-03 → 2016-03-02 (-1d) | 24d → 23d | 6% → 82% |  |  |
| 17 | Minutes |  |  |  |  |  | resources none → Harry [10%] |
| 18 | **Sprint backlog** |  | 2016-02-09 → 2016-02-11 (+2d) | 1d → 3d | 0% → 100% |  |  |
| 19 | Create Gherkin features |  | 2016-02-09 → 2016-02-11 (+2d) | 1d → 3d | 0% → 100% |  | resources none → Jordan [80%] |
| 20 | Create detailed analysis object model |  | 2016-02-09 → 2016-02-11 (+2d) | 1d → 3d | 0% → 100% |  | resources none → Harry [80%] |
| 21 | **Detailed software architecture** |  | 2016-02-09 → 2016-02-10 (+1d) | 1d → 2d | 0% → 100% |  |  |
| 22 | Make the component diagram |  | 2016-02-09 → 2016-02-10 (+1d) | 1d → 2d | 0% → 100% |  | resources none → Matt [75%] |
| 23 | **Detailed object design** |  | 2016-02-09 → 2016-02-14 (+5d) | 1d → 6d | 0% → 100% |  |  |
| 24 | Security layer design | 2016-02-09 → 2016-02-13 (+4d) | 2016-02-09 → 2016-02-14 (+5d) | 1d → 2d | 0% → 100% |  | resources none → Jordan; Jack; Majid; Carl; Matt |
| 25 | Create data management strategy | 2016-02-09 → 2016-02-12 (+3d) | 2016-02-09 → 2016-02-12 (+3d) |  | 0% → 100% |  | resources none → Jordan; Jack [50%]; Majid; Matt; Ibrahim |
| 26 | Create object design model |  | 2016-02-09 → 2016-02-11 (+2d) | 1d → 3d | 0% → 100% |  | resources none → Jordan [20%]; Jack [20%]; Majid [20%]; Matt [10%]; Ibrahim [20%] |
| 27 | **Detailed feature specification** | 2016-02-09 → 2016-02-15 (+6d) | 2016-02-09 → 2016-02-17 (+8d) | 1d → 3d | 0% → 100% |  |  |
| 28 | Feature specification for model layer | 2016-02-09 → 2016-02-15 (+6d) | 2016-02-09 → 2016-02-17 (+8d) | 1d → 3d | 0% → 100% |  | resources none → Majid [33%]; Matt [33%]; Ibrahim [33%] |
| 29 | Feature specification for controller layer | 2016-02-09 → 2016-02-15 (+6d) | 2016-02-09 → 2016-02-17 (+8d) | 1d → 3d | 0% → 100% |  | resources none → Majid [33%]; Matt [33%]; Ibrahim [33%] |
| 30 | Feature specification for security layer | 2016-02-09 → 2016-02-15 (+6d) | 2016-02-09 → 2016-02-17 (+8d) | 1d → 3d | 0% → 100% |  | resources none → Majid [33%]; Matt [33%]; Ibrahim [33%] |
| 31 | **Project plan** |  | 2016-02-13 → 2016-02-12 (-1d) | 5d → 4d | 0% → 100% |  |  |
| 32 | Update Risk Assessment |  |  |  | 0% → 100% |  | resources Jack → Jack [50%] |
| 33 | Create test plan |  |  |  | 0% → 100% |  | resources Jack → Jack [80%] |
| 34 | Update Gantt chart for worksheet 2 |  |  |  | 0% → 100% |  | resources Jack → Jack [80%] |
| 35 | Create configuration management plan | 2016-02-13 → 2016-02-10 (-3d) | 2016-02-13 → 2016-02-10 (-3d) |  | 0% → 100% |  | resources Jack → Jack [67.5%] |
| 36 | **Prototype source code** |  | 2016-03-02 → 2016-03-01 (-1d) | 17d → 16d | 0% → 91% | 35FS+1d → 23, 35FS+1d |  |
| 40 | **Step definitions** | 2016-03-02 → 2016-02-24 (-7d) |  | 1d → 8d | 0% → 50% |  |  |
| 41 | Step defs for security layer | 2016-03-02 → 2016-02-24 (-7d) |  | 1d → 8d | 0% → 49% |  | resources none → Majid [33%]; Harry [33%] |
| 42 | Step defs for controller layer | 2016-03-02 → 2016-02-24 (-7d) |  | 1d → 8d | 0% → 51% |  | resources none → Majid [33%]; Harry [33%] |
| 43 | Step defs for model layer | 2016-03-02 → 2016-02-24 (-7d) |  | 1d → 8d | 0% → 52% |  | resources none → Majid [33%]; Harry [33%] |
| 44 | Prototype complete | 2016-03-03 → 2016-03-02 (-1d) | 2016-03-03 → 2016-03-02 (-1d) |  |  |  |  |
| 46 | Finalise and submit WS2 | 2016-03-04 → 2016-03-03 (-1d) | 2016-03-04 → 2016-03-03 (-1d) |  |  |  |  |

## Version 3 (saved 2016-03-03)

Note of the change: Merge branch 'master' of https://github.com/UOL-CS/co2015-group-06-repo

Last finish 2016-03-03 → 2016-04-26 (+54d). Complete tasks 29 → 37.

Added:

| ID | Task | Duration | Start | Finish | Predecessors | Resources |
| --- | --- | --- | --- | --- | --- | --- |
| 29 | Profile | 1d | 2016-02-11 | 2016-02-11 |  | Ibrahim [80%] |
| 30 | Searching | 1d | 2016-02-12 | 2016-02-12 |  | Ibrahim [50%] |
| 31 | Landlord Property Management | 1d | 2016-02-13 | 2016-02-13 |  | Ibrahim |
| 32 | Admin Management | 1d | 2016-02-14 | 2016-02-14 |  | Ibrahim |
| 33 | User Interaction | 1d | 2016-02-15 | 2016-02-15 |  | Ibrahim |
| 47 | Step defs for User Interaction | 2d | 2016-02-29 | 2016-03-01 |  | Jordan [50%]; Harry [33%]; Ahtif |
| 51 | **Worksheet 3** | 53d | 2016-03-04 | 2016-04-25 | 15FS+1d |  |
| 52 | **Sprint Backlog** | 2d | 2016-03-10 | 2016-03-11 |  |  |
| 53 | Create Gherkin features | 2d | 2016-03-10 | 2016-03-11 |  |  |
| 54 | Create detailed scenarios of features | 2d | 2016-03-10 | 2016-03-11 |  |  |
| 55 | **Design Documents** | 2d | 2016-03-07 | 2016-03-08 |  |  |
| 56 | Update diagrams | 2d | 2016-03-07 | 2016-03-08 |  |  |
| 57 | Summary of the key design decisions | 1d | 2016-03-08 | 2016-03-08 |  |  |
| 58 | Summary of what was done when designing the application | 1d | 2016-03-08 | 2016-03-08 |  |  |
| 59 | **Project Plan** | 4d | 2016-03-04 | 2016-03-07 |  |  |
| 60 | Update risk assessment | 1d | 2016-03-07 | 2016-03-07 |  |  |
| 61 | Update Gantt chart | 1d | 2016-03-04 | 2016-03-04 |  |  |
| 62 | Update test plan | 1d | 2016-03-05 | 2016-03-05 |  |  |
| 63 | Update configuration management plan | 1d | 2016-03-06 | 2016-03-06 |  |  |
| 64 | **Minutes** | 1d | 2016-03-04 | 2016-03-04 |  |  |
| 65 | Write up minutes of initial sprint 2 meeting | 1d | 2016-03-04 | 2016-03-04 |  |  |
| 66 | **Sprint 1 Retrospective** | 3d | 2016-03-04 | 2016-03-06 |  |  |
| 67 | Discuss Sprint 1 | 1d | 2016-03-04 | 2016-03-04 |  |  |
| 68 | Write up retrospective | 2d | 2016-03-05 | 2016-03-06 |  |  |
| 69 | **Sprint 2 Retrospective** | 2d | 2016-04-24 | 2016-04-25 |  |  |
| 70 | Write up retrospective | 1d | 2016-04-25 | 2016-04-25 |  |  |
| 71 | Discuss Sprint 2 | 1d | 2016-04-24 | 2016-04-24 |  |  |
| 72 | **User Manual and Installation Guide** | 3d | 2016-04-11 | 2016-04-13 | 75 |  |
| 73 | Write installation guide | 3d | 2016-04-11 | 2016-04-13 |  |  |
| 74 | Write user manual | 3d | 2016-04-11 | 2016-04-13 |  |  |
| 75 | **Source code** | 24d | 2016-03-14 | 2016-04-06 | 55 |  |
| 76 | Mapping | 10d | 2016-03-19 | 2016-03-28 |  |  |
| 77 | Searching properties | 6d | 2016-03-27 | 2016-04-01 |  |  |
| 78 | Implement styling | 3d | 2016-04-04 | 2016-04-06 |  |  |
| 79 | Profiles | 5d | 2016-03-14 | 2016-03-18 |  |  |
| 80 | **Automated Testing** | 5d | 2016-04-15 | 2016-04-19 | 75FF |  |
| 81 | Implement Step defs for login and recovery | 5d | 2016-04-15 | 2016-04-19 |  |  |
| 82 | Implement Step defs for profile | 5d | 2016-04-15 | 2016-04-19 |  |  |
| 83 | Implement Step defs for admin management | 5d | 2016-04-15 | 2016-04-19 |  |  |
| 84 | Implement Step defs for searching | 5d | 2016-04-15 | 2016-04-19 |  |  |
| 85 | **Individual Essay** | 3d | 2016-04-20 | 2016-04-22 |  |  |
| 86 | Communication section | 3d | 2016-04-20 | 2016-04-22 |  |  |
| 87 | Teamwork section | 3d | 2016-04-20 | 2016-04-22 |  |  |
| 88 | Problem solving section | 3d | 2016-04-20 | 2016-04-22 |  |  |
| 89 | Project management section | 3d | 2016-04-20 | 2016-04-22 |  |  |
| 90 | Creativity section | 3d | 2016-04-20 | 2016-04-22 |  |  |
| 91 | Adaptability section | 3d | 2016-04-20 | 2016-04-22 |  |  |
| 92 | Dealing with pressure section | 3d | 2016-04-20 | 2016-04-22 |  |  |
| 93 | Worksheet 3 Submitted | 0d | 2016-04-26 | 2016-04-26 | 52, 55, 59, 64, 66, 69, 72, 75, 80, 85 |  |
| 94 | Source code complete | 0d | 2016-04-07 | 2016-04-07 | 75 |  |
| 95 | Testing complete | 0d | 2016-04-20 | 2016-04-20 | 80 |  |

Removed: 24 Security layer design; 25 Create data management strategy

Changed:

| ID | Task | Start | Finish | Duration | Complete | Predecessors | Other |
| --- | --- | --- | --- | --- | --- | --- | --- |
| 15 | **Worksheet 2** |  |  |  | 82% → 90% |  |  |
| 22 | Make the component diagram |  |  |  |  |  | resources Matt [75%] → Majid [75%] |
| 23 | **Detailed object design** |  | 2016-02-14 → 2016-02-11 (-3d) | 6d → 3d |  |  |  |
| 24 | Create object design model |  |  |  |  |  | resources Jordan [20%]; Jack [20%]; Majid [20%]; Matt [10%]; Ibrahim [20%] → Jordan [20%]; Jack [20%]; Majid [10%]; Harry [5%]; Ibrahim [20%] |
| 25 | **Detailed feature specification** | 2016-02-15 → 2016-02-11 (-4d) | 2016-02-17 → 2016-02-15 (-2d) | 3d → 5d |  |  |  |
| 26 | Access Control | 2016-02-15 → 2016-02-13 (-2d) | 2016-02-17 → 2016-02-13 (-4d) | 3d → 1d |  |  | was named Feature specification for model layer; resources Majid [33%]; Matt [33%]; Ibrahim [33%] → Majid [50%] |
| 27 | Register | 2016-02-15 → 2016-02-14 (-1d) | 2016-02-17 → 2016-02-14 (-3d) | 3d → 1d |  |  | was named Feature specification for controller layer; resources Majid [33%]; Matt [33%]; Ibrahim [33%] → Majid [50%] |
| 28 | Login and Recovery |  | 2016-02-17 → 2016-02-15 (-2d) | 3d → 1d |  |  | was named Feature specification for security layer; resources Majid [33%]; Matt [33%]; Ibrahim [33%] → Majid |
| 34 | **Project plan** |  |  |  | 100% → 80% |  |  |
| 39 | **Prototype source code** |  |  |  | 91% → 100% |  |  |
| 40 | Registration |  | 2016-02-24 → 2016-02-21 (-3d) | 10d → 7d |  |  | resources Jordan [80%]; Carl [20%] → Jordan [60%]; Carl [40%] |
| 41 | Messaging |  | 2016-02-29 → 2016-02-25 (-4d) | 10d → 6d |  |  |  |
| 42 | Add Property Listings | 2016-02-15 → 2016-02-22 (+7d) |  | 16d → 9d | 80% → 100% |  | resources Carl [80%] → Carl [60%] |
| 43 | **Step definitions** | 2016-02-24 → 2016-02-29 (+5d) | 2016-03-02 → 2016-03-01 (-1d) | 8d → 2d | 50% → 100% | 39FF → 25, 39FF |  |
| 44 | Step defs for Access control | 2016-02-24 → 2016-02-29 (+5d) | 2016-03-02 → 2016-03-01 (-1d) | 8d → 2d | 49% → 100% |  | was named Step defs for security layer; resources Majid [33%]; Harry [33%] → Jack [50%]; Majid [50%]; Harry [33%] |
| 45 | Step defs for Register | 2016-02-24 → 2016-02-29 (+5d) | 2016-03-02 → 2016-03-01 (-1d) | 8d → 2d | 51% → 100% |  | was named Step defs for controller layer |
| 46 | Step defs for Landlord property management | 2016-02-24 → 2016-02-29 (+5d) | 2016-03-02 → 2016-03-01 (-1d) | 8d → 2d | 52% → 100% |  | was named Step defs for model layer; resources Majid [33%]; Harry [33%] → Carl [40%] |
| 49 | Testing complete | 2016-03-03 → 2016-03-02 (-1d) | 2016-03-03 → 2016-03-02 (-1d) |  |  |  |  |

## Version 4 (saved 2016-03-03)

Note of the change: Updated the gantt chart

Last finish stays 2016-04-26. Complete tasks 37 → 39.

Added:

| ID | Task | Duration | Start | Finish | Resources |
| --- | --- | --- | --- | --- | --- |
| 43 | User profiles | 3d | 2016-02-28 | 2016-03-01 | Ahtif |
| 49 | Step defs for profile | 2d | 2016-03-02 | 2016-03-03 | Jordan [20%]; Jack [20%]; Harry [20%] |

Removed: 79 Profiles; 84 Implement Step defs for searching

Changed:

| ID | Task | Start | Finish | Duration | Other |
| --- | --- | --- | --- | --- | --- |
| 15 | **Worksheet 2** |  | 2016-03-02 → 2016-03-03 (+1d) | 23d → 24d |  |
| 44 | **Step definitions** | 2016-02-29 → 2016-03-02 (+2d) | 2016-03-01 → 2016-03-03 (+2d) |  |  |
| 45 | Step defs for Access control | 2016-02-29 → 2016-03-02 (+2d) | 2016-03-01 → 2016-03-03 (+2d) |  | resources Jack [50%]; Majid [50%]; Harry [33%] → Jack [50%]; Majid [50%]; Harry [20%] |
| 46 | Step defs for Register | 2016-02-29 → 2016-03-02 (+2d) | 2016-03-01 → 2016-03-03 (+2d) |  | resources Majid [33%]; Harry [33%] → Majid [33%]; Harry [20%] |
| 47 | Step defs for Landlord property management | 2016-02-29 → 2016-03-02 (+2d) | 2016-03-01 → 2016-03-03 (+2d) |  |  |
| 48 | Step defs for User Interaction | 2016-02-29 → 2016-03-02 (+2d) | 2016-03-01 → 2016-03-03 (+2d) |  |  |
| 51 | Testing complete | 2016-03-02 → 2016-03-04 (+2d) | 2016-03-02 → 2016-03-04 (+2d) |  |  |
| 53 | **Worksheet 3** | 2016-03-04 → 2016-03-06 (+2d) |  | 53d → 51d |  |
| 61 | **Project Plan** | 2016-03-04 → 2016-03-06 (+2d) |  | 4d → 2d |  |
| 63 | Update Gantt chart | 2016-03-04 → 2016-03-06 (+2d) | 2016-03-04 → 2016-03-06 (+2d) |  |  |
| 64 | Update test plan | 2016-03-05 → 2016-03-06 (+1d) | 2016-03-05 → 2016-03-06 (+1d) |  |  |
| 66 | **Minutes** | 2016-03-04 → 2016-03-06 (+2d) | 2016-03-04 → 2016-03-06 (+2d) |  |  |
| 67 | Write up minutes of initial sprint 2 meeting | 2016-03-04 → 2016-03-06 (+2d) | 2016-03-04 → 2016-03-06 (+2d) |  |  |
| 68 | **Sprint 1 Retrospective** | 2016-03-04 → 2016-03-06 (+2d) | 2016-03-06 → 2016-03-07 (+1d) | 3d → 2d |  |
| 69 | Discuss Sprint 1 | 2016-03-04 → 2016-03-06 (+2d) | 2016-03-04 → 2016-03-06 (+2d) |  |  |
| 70 | Write up retrospective | 2016-03-05 → 2016-03-06 (+1d) | 2016-03-06 → 2016-03-07 (+1d) |  |  |
| 77 | **Source code** | 2016-03-14 → 2016-03-19 (+5d) |  | 24d → 19d |  |

## Version 5 (saved 2016-03-04)

Note of the change: Updated the gantt chart

Last finish stays 2016-04-26. Complete tasks 39 → 38.

Added:

| ID | Task | Duration | Start | Finish |
| --- | --- | --- | --- | --- |
| 83 | Implement Step defs for searching | 5d | 2016-04-15 | 2016-04-19 |

Removed: 49 Step defs for profile
